# S公司项目集

How a schedule from a web Gantt chart changed from version to version. A marks actual dates.

## Version 1 (saved 2025-02-09)

| ID | WBS | Task | Duration | Start | Finish | Predecessors |
| --- | --- | --- | --- | --- | --- | --- |
| 2 | 1 | **大模型知识库项目** | 142d | 2024-02-29 | 2024-09-13 |  |
| 3 | 1.1 | **项目启动** | 6d | 2024-02-29 | 2024-03-07 |  |
| 4 |  | 市场调研 | 6d | 2024-02-29 | 2024-03-07 |  |
| 5 |  | 技术调研 | 6d | 2024-02-29 | 2024-03-07 |  |
| 6 |  | 经济性预估 | 5d | 2024-02-29 | 2024-03-06 |  |
| 7 | 1.2 | **需求分析** | 13d | 2024-03-08 | 2024-03-26 |  |
| 8 |  | 需求收集 | 6d | 2024-03-08 | 2024-03-15 | 4, 5, 6 |
| 9 |  | 需求调研 | 7d | 2024-03-18 | 2024-03-26 | 8 |
| 10 | 1.3 | **产品设计** | 21d | 2024-03-27 | 2024-04-24 |  |
| 11 |  | 需求冻结 | 4d | 2024-03-27 | 2024-04-01 | 9 |
| 12 |  | 整体设计执行 | 7d | 2024-04-02 | 2024-04-10 | 11 |
| 13 | 1.3.3 | **模块设计执行** | 10d | 2024-04-11 | 2024-04-24 |  |
| 14 |  | API产品设计 | 6d | 2024-04-11 | 2024-04-18 | 12 |
| 15 |  | 模型产品设计 | 10d | 2024-04-11 | 2024-04-24 | 12 |
| 16 |  | 数仓产品设计 | 6d | 2024-04-11 | 2024-04-18 | 12 |
| 17 |  | 平台产品设计 | 10d | 2024-04-11 | 2024-04-24 | 12 |
| 18 |  | 产品UI设计 | 6d | 2024-04-11 | 2024-04-18 | 12 |
| 19 | 1.4 | **技术设计** | 30d | 2024-04-25 | 2024-06-05 |  |
| 20 |  | 整体架构设计 | 10d | 2024-04-25 | 2024-05-08 | 14, 15, 16, 17, 18 |
| 21 | 1.4.2 | **模块技术设计** | 20d | 2024-05-09 | 2024-06-05 |  |
| 22 |  | API技术设计 | 13d | 2024-05-09 | 2024-05-27 | 20 |
| 23 |  | 识别模型技术设计 | 18d | 2024-05-09 | 2024-06-03 | 20 |
| 24 |  | 处置模型技术设计 | 20d | 2024-05-09 | 2024-06-05 | 20 |
| 25 |  | 数仓技术设计 | 6d | 2024-05-09 | 2024-05-16 | 20 |
| 26 |  | 平台技术设计 | 12d | 2024-05-09 | 2024-05-24 | 20 |
| 27 | 1.5 | **产品研发** | 57d | 2024-05-17 | 2024-08-05 |  |
| 28 | 1.5.1 | **模块研发** | 49d | 2024-05-17 | 2024-07-24 |  |
| 29 | 1.5.1.1 | **API模块研发** | 26d | 2024-05-28 | 2024-07-02 |  |
| 30 |  | 主接口研发 | 10d | 2024-05-28 | 2024-06-10 | 22 |
| 31 |  | PI层研发 | 8d | 2024-06-11 | 2024-06-20 | 30 |
| 32 |  | RE层研发 | 13d | 2024-06-11 | 2024-06-27 | 30 |
| 33 |  | BE层研发 | 16d | 2024-06-11 | 2024-07-02 | 30 |
| 34 | 1.5.1.2 | **识别模型研发** | 30d | 2024-06-04 | 2024-07-15 |  |
| 35 |  | 分类模型研发 | 30d | 2024-06-04 | 2024-07-15 | 23 |
| 36 |  | 负向过滤模型研发 | 25d | 2024-06-04 | 2024-07-08 | 23 |
| 37 | 1.5.1.3 | **处置模型研发** | 23d | 2024-06-06 | 2024-07-08 |  |
| 38 |  | RAG知识库研发 | 23d | 2024-06-06 | 2024-07-08 | 24 |
| 39 |  | LLM研发 | 20d | 2024-06-06 | 2024-07-03 | 24 |
| 40 |  | 识别检索模型研发 | 15d | 2024-06-06 | 2024-06-26 | 24 |
| 41 | 1.5.1.4 | **数仓研发** | 38d | 2024-05-17 | 2024-07-09 |  |
| 42 |  | 数据爬取 | 25d | 2024-05-17 | 2024-06-20 | 25 |
| 43 |  | 数据清洗 | 30d | 2024-05-17 | 2024-06-27 | 25 |
| 44 |  | 数据入库 | 8d | 2024-06-28 | 2024-07-09 | 43, 42 |
| 45 | 1.5.1.5 | **平台研发** | 16d | 2024-07-03 | 2024-07-24 |  |
| 46 |  | CONSOLE平台研发 | 12d | 2024-07-09 | 2024-07-24 | 26, 38, 39, 40 |
| 47 |  | ADMIN平台研发 | 12d | 2024-07-03 | 2024-07-18 | 26, 31, 32, 33 |
| 48 |  | OP平台研发 | 7d | 2024-07-16 | 2024-07-24 | 26, 36, 35 |
| 49 |  | 集成研发 | 8d | 2024-07-25 | 2024-08-05 | 46, 47, 48, 44 |
| 50 | 1.6 | **产品测试** | 56d | 2024-06-06 | 2024-08-22 |  |
| 51 | 1.6.1 | **测试设计** | 16d | 2024-06-06 | 2024-06-27 |  |
| 52 |  | 测试用例设计 | 10d | 2024-06-06 | 2024-06-19 | 22, 23, 24, 25, 26 |
| 53 |  | 测试方案设计 | 6d | 2024-06-20 | 2024-06-27 | 52 |
| 54 | 1.6.2 | **模块测试** | 25d | 2024-07-03 | 2024-08-06 |  |
| 55 |  | API模块测试 | 9d | 2024-07-03 | 2024-07-15 | 53, 31, 32, 33 |
| 56 |  | 识别模型测试 | 12d | 2024-07-16 | 2024-07-31 | 53, 35, 36 |
| 57 |  | 处置模型测试 | 16d | 2024-07-09 | 2024-07-30 | 53, 38, 39, 40 |
| 58 |  | 数仓测试 | 8d | 2024-07-10 | 2024-07-19 | 53, 44 |
| 59 |  | 平台测试 | 9d | 2024-07-25 | 2024-08-06 | 53, 46, 47, 48 |
| 60 |  | 集成测试 | 12d | 2024-08-07 | 2024-08-22 | 49, 59, 58, 57, 56, 55 |
| 61 | 1.7 | **部署与验收** | 29d | 2024-08-06 | 2024-09-13 |  |
| 62 |  | 部署方案设计 | 5d | 2024-08-06 | 2024-08-12 | 49 |
| 63 |  | 部署实施 | 12d | 2024-08-23 | 2024-09-09 | 60, 62 |
| 64 |  | 验收 | 4d | 2024-09-10 | 2024-09-13 | 63 |

## Version 2 (saved 2025-02-09)

Last finish 2024-09-13 → 2024-12-17 (+95d).

Changed:

| ID | Task | Start | Finish | Predecessors |
| --- | --- | --- | --- | --- |
| 2 | **大模型知识库项目** | 2024-02-29 → 2024-06-03 (+95d) | 2024-09-13 → 2024-12-17 (+95d) |  |
| 3 | **项目启动** | 2024-02-29 → 2024-06-03 (+95d) | 2024-03-07 → 2024-06-10 (+95d) |  |
| 4 | 市场调研 | 2024-02-29 → 2024-06-03 (+95d) | 2024-03-07 → 2024-06-10 (+95d) |  |
| 5 | 技术调研 | 2024-02-29 → 2024-06-03 (+95d) | 2024-03-07 → 2024-06-10 (+95d) |  |
| 6 | 经济性预估 | 2024-02-29 → 2024-06-03 (+95d) | 2024-03-06 → 2024-06-07 (+93d) |  |
| 7 | **需求分析** | 2024-03-08 → 2024-06-11 (+95d) | 2024-03-26 → 2024-06-27 (+93d) |  |
| 8 | 需求收集 | 2024-03-08 → 2024-06-11 (+95d) | 2024-03-15 → 2024-06-18 (+95d) | 4, 5, 6 → 4, 5, 6, 3 |
| 9 | 需求调研 | 2024-03-18 → 2024-06-19 (+93d) | 2024-03-26 → 2024-06-27 (+93d) |  |
| 10 | **产品设计** | 2024-03-27 → 2024-06-28 (+93d) | 2024-04-24 → 2024-07-26 (+93d) |  |
| 11 | 需求冻结 | 2024-03-27 → 2024-06-28 (+93d) | 2024-04-01 → 2024-07-03 (+93d) |  |
| 12 | 整体设计执行 | 2024-04-02 → 2024-07-04 (+93d) | 2024-04-10 → 2024-07-12 (+93d) |  |
| 13 | **模块设计执行** | 2024-04-11 → 2024-07-15 (+95d) | 2024-04-24 → 2024-07-26 (+93d) |  |
| 14 | API产品设计 | 2024-04-11 → 2024-07-15 (+95d) | 2024-04-18 → 2024-07-22 (+95d) |  |
| 15 | 模型产品设计 | 2024-04-11 → 2024-07-15 (+95d) | 2024-04-24 → 2024-07-26 (+93d) |  |
| 16 | 数仓产品设计 | 2024-04-11 → 2024-07-15 (+95d) | 2024-04-18 → 2024-07-22 (+95d) |  |
| 17 | 平台产品设计 | 2024-04-11 → 2024-07-15 (+95d) | 2024-04-24 → 2024-07-26 (+93d) |  |
| 18 | 产品UI设计 | 2024-04-11 → 2024-07-15 (+95d) | 2024-04-18 → 2024-07-22 (+95d) |  |
| 19 | **技术设计** | 2024-04-25 → 2024-07-29 (+95d) | 2024-06-05 → 2024-09-06 (+93d) |  |
| 20 | 整体架构设计 | 2024-04-25 → 2024-07-29 (+95d) | 2024-05-08 → 2024-08-09 (+93d) |  |
| 21 | **模块技术设计** | 2024-05-09 → 2024-08-12 (+95d) | 2024-06-05 → 2024-09-06 (+93d) |  |
| 22 | API技术设计 | 2024-05-09 → 2024-08-12 (+95d) | 2024-05-27 → 2024-08-28 (+93d) |  |
| 23 | 识别模型技术设计 | 2024-05-09 → 2024-08-12 (+95d) | 2024-06-03 → 2024-09-04 (+93d) |  |
| 24 | 处置模型技术设计 | 2024-05-09 → 2024-08-12 (+95d) | 2024-06-05 → 2024-09-06 (+93d) |  |
| 25 | 数仓技术设计 | 2024-05-09 → 2024-08-12 (+95d) | 2024-05-16 → 2024-08-19 (+95d) |  |
| 26 | 平台技术设计 | 2024-05-09 → 2024-08-12 (+95d) | 2024-05-24 → 2024-08-27 (+95d) |  |
| 27 | **产品研发** | 2024-05-17 → 2024-08-20 (+95d) | 2024-08-05 → 2024-11-06 (+93d) |  |
| 28 | **模块研发** | 2024-05-17 → 2024-08-20 (+95d) | 2024-07-24 → 2024-10-25 (+93d) |  |
| 29 | **API模块研发** | 2024-05-28 → 2024-08-29 (+93d) | 2024-07-02 → 2024-10-03 (+93d) |  |
| 30 | 主接口研发 | 2024-05-28 → 2024-08-29 (+93d) | 2024-06-10 → 2024-09-11 (+93d) |  |
| 31 | PI层研发 | 2024-06-11 → 2024-09-12 (+93d) | 2024-06-20 → 2024-09-23 (+95d) |  |
| 32 | RE层研发 | 2024-06-11 → 2024-09-12 (+93d) | 2024-06-27 → 2024-09-30 (+95d) |  |
| 33 | BE层研发 | 2024-06-11 → 2024-09-12 (+93d) | 2024-07-02 → 2024-10-03 (+93d) |  |
| 34 | **识别模型研发** | 2024-06-04 → 2024-09-05 (+93d) | 2024-07-15 → 2024-10-16 (+93d) |  |
| 35 | 分类模型研发 | 2024-06-04 → 2024-09-05 (+93d) | 2024-07-15 → 2024-10-16 (+93d) |  |
| 36 | 负向过滤模型研发 | 2024-06-04 → 2024-09-05 (+93d) | 2024-07-08 → 2024-10-09 (+93d) |  |
| 37 | **处置模型研发** | 2024-06-06 → 2024-09-09 (+95d) | 2024-07-08 → 2024-10-09 (+93d) |  |
| 38 | RAG知识库研发 | 2024-06-06 → 2024-09-09 (+95d) | 2024-07-08 → 2024-10-09 (+93d) |  |
| 39 | LLM研发 | 2024-06-06 → 2024-09-09 (+95d) | 2024-07-03 → 2024-10-04 (+93d) |  |
| 40 | 识别检索模型研发 | 2024-06-06 → 2024-09-09 (+95d) | 2024-06-26 → 2024-09-27 (+93d) |  |
| 41 | **数仓研发** | 2024-05-17 → 2024-08-20 (+95d) | 2024-07-09 → 2024-10-10 (+93d) |  |
| 42 | 数据爬取 | 2024-05-17 → 2024-08-20 (+95d) | 2024-06-20 → 2024-09-23 (+95d) |  |
| 43 | 数据清洗 | 2024-05-17 → 2024-08-20 (+95d) | 2024-06-27 → 2024-09-30 (+95d) |  |
| 44 | 数据入库 | 2024-06-28 → 2024-10-01 (+95d) | 2024-07-09 → 2024-10-10 (+93d) |  |
| 45 | **平台研发** | 2024-07-03 → 2024-10-04 (+93d) | 2024-07-24 → 2024-10-25 (+93d) |  |
| 46 | CONSOLE平台研发 | 2024-07-09 → 2024-10-10 (+93d) | 2024-07-24 → 2024-10-25 (+93d) |  |
| 47 | ADMIN平台研发 | 2024-07-03 → 2024-10-04 (+93d) | 2024-07-18 → 2024-10-21 (+95d) |  |
| 48 | OP平台研发 | 2024-07-16 → 2024-10-17 (+93d) | 2024-07-24 → 2024-10-25 (+93d) |  |
| 49 | 集成研发 | 2024-07-25 → 2024-10-28 (+95d) | 2024-08-05 → 2024-11-06 (+93d) |  |
| 50 | **产品测试** | 2024-06-06 → 2024-09-09 (+95d) | 2024-08-22 → 2024-11-25 (+95d) |  |
| 51 | **测试设计** | 2024-06-06 → 2024-09-09 (+95d) | 2024-06-27 → 2024-09-30 (+95d) |  |
| 52 | 测试用例设计 | 2024-06-06 → 2024-09-09 (+95d) | 2024-06-19 → 2024-09-20 (+93d) |  |
| 53 | 测试方案设计 | 2024-06-20 → 2024-09-23 (+95d) | 2024-06-27 → 2024-09-30 (+95d) |  |
| 54 | **模块测试** | 2024-07-03 → 2024-10-04 (+93d) | 2024-08-06 → 2024-11-07 (+93d) |  |
| 55 | API模块测试 | 2024-07-03 → 2024-10-04 (+93d) | 2024-07-15 → 2024-10-16 (+93d) |  |
| 56 | 识别模型测试 | 2024-07-16 → 2024-10-17 (+93d) | 2024-07-31 → 2024-11-01 (+93d) |  |
| 57 | 处置模型测试 | 2024-07-09 → 2024-10-10 (+93d) | 2024-07-30 → 2024-10-31 (+93d) |  |
| 58 | 数仓测试 | 2024-07-10 → 2024-10-11 (+93d) | 2024-07-19 → 2024-10-22 (+95d) |  |
| 59 | 平台测试 | 2024-07-25 → 2024-10-28 (+95d) | 2024-08-06 → 2024-11-07 (+93d) |  |
| 60 | 集成测试 | 2024-08-07 → 2024-11-08 (+93d) | 2024-08-22 → 2024-11-25 (+95d) |  |
| 61 | **部署与验收** | 2024-08-06 → 2024-11-07 (+93d) | 2024-09-13 → 2024-12-17 (+95d) |  |
| 62 | 部署方案设计 | 2024-08-06 → 2024-11-07 (+93d) | 2024-08-12 → 2024-11-13 (+93d) |  |
| 63 | 部署实施 | 2024-08-23 → 2024-11-26 (+95d) | 2024-09-09 → 2024-12-11 (+93d) |  |
| 64 | 验收 | 2024-09-10 → 2024-12-12 (+93d) | 2024-09-13 → 2024-12-17 (+95d) |  |

## Version 3 (saved 2025-02-19)

Last finish 2024-12-17 → 2024-12-20 (+3d).

Added:

| ID | Task | Duration | Start | Finish | Predecessors |
| --- | --- | --- | --- | --- | --- |
| 34 | API集成 | 3d | 2024-10-04 | 2024-10-08 | 31, 32, 33 |
| 42 | 模型集成 | 3d | 2024-10-10 | 2024-10-14 | 39, 40, 41 |

Changed:

| ID | Task | Start | Finish | Duration | Predecessors |
| --- | --- | --- | --- | --- | --- |
| 2 | **大模型知识库项目** |  | 2024-12-17 → 2024-12-20 (+3d) | 142d → 145d |  |
| 8 | 需求收集 |  |  |  | 4, 5, 6, 3 → 4, 5, 6 |
| 27 | **产品研发** |  | 2024-11-06 → 2024-11-11 (+5d) | 57d → 60d |  |
| 28 | **模块研发** |  | 2024-10-25 → 2024-10-30 (+5d) | 49d → 52d |  |
| 29 | **API模块研发** |  | 2024-10-03 → 2024-10-08 (+5d) | 26d → 29d |  |
| 38 | **处置模型研发** |  | 2024-10-09 → 2024-10-14 (+5d) | 23d → 26d |  |
| 47 | **平台研发** | 2024-10-04 → 2024-10-09 (+5d) | 2024-10-25 → 2024-10-30 (+5d) |  |  |
| 48 | CONSOLE平台研发 | 2024-10-10 → 2024-10-15 (+5d) | 2024-10-25 → 2024-10-30 (+5d) |  | 26, 39, 40, 41 → 26, 42 |
| 49 | ADMIN平台研发 | 2024-10-04 → 2024-10-09 (+5d) | 2024-10-21 → 2024-10-24 (+3d) |  | 26, 31, 32, 33 → 26, 34 |
| 51 | 集成研发 | 2024-10-28 → 2024-10-31 (+3d) | 2024-11-06 → 2024-11-11 (+5d) |  | 48, 49, 50, 46 → 48, 49, 50 |
| 52 | **产品测试** |  | 2024-11-25 → 2024-11-28 (+3d) | 56d → 59d |  |
| 56 | **模块测试** | 2024-10-04 → 2024-10-09 (+5d) | 2024-11-07 → 2024-11-12 (+5d) |  |  |
| 57 | API模块测试 | 2024-10-04 → 2024-10-09 (+5d) | 2024-10-16 → 2024-10-21 (+5d) |  | 55, 31, 32, 33 → 55, 34 |
| 59 | 处置模型测试 | 2024-10-10 → 2024-10-15 (+5d) | 2024-10-31 → 2024-11-05 (+5d) |  | 55, 39, 40, 41 → 55, 42 |
| 61 | 平台测试 | 2024-10-28 → 2024-10-31 (+3d) | 2024-11-07 → 2024-11-12 (+5d) |  |  |
| 62 | 集成测试 | 2024-11-08 → 2024-11-13 (+5d) | 2024-11-25 → 2024-11-28 (+3d) |  |  |
| 63 | **部署与验收** | 2024-11-07 → 2024-11-12 (+5d) | 2024-12-17 → 2024-12-20 (+3d) |  |  |
| 64 | 部署方案设计 | 2024-11-07 → 2024-11-12 (+5d) | 2024-11-13 → 2024-11-18 (+5d) |  |  |
| 65 | 部署实施 | 2024-11-26 → 2024-11-29 (+3d) | 2024-12-11 → 2024-12-16 (+5d) |  |  |
| 66 | 验收 | 2024-12-12 → 2024-12-17 (+5d) | 2024-12-17 → 2024-12-20 (+3d) |  |  |

## Version 4 (saved 2025-02-21)

Last finish 2024-12-20 → 2024-12-25 (+5d).

Changed:

| ID | Task | Start | Finish | Duration |
| --- | --- | --- | --- | --- |
| 2 | **大模型知识库项目** |  | 2024-12-20 → 2024-12-25 (+5d) | 145d → 148d |
| 3 | **项目启动** |  | 2024-06-10 → 2024-06-11 (+1d) | 6d → 7d |
| 5 | 技术调研 |  | 2024-06-10 → 2024-06-11 (+1d) | 6d → 7d |
| 7 | **需求分析** | 2024-06-11 → 2024-06-12 (+1d) | 2024-06-27 → 2024-06-28 (+1d) |  |
| 8 | 需求收集 | 2024-06-11 → 2024-06-12 (+1d) | 2024-06-18 → 2024-06-19 (+1d) |  |
| 9 | 需求调研 | 2024-06-19 → 2024-06-20 (+1d) | 2024-06-27 → 2024-06-28 (+1d) |  |
| 10 | **产品设计** | 2024-06-28 → 2024-07-01 (+3d) | 2024-07-26 → 2024-07-31 (+5d) | 21d → 23d |
| 11 | 需求冻结 | 2024-06-28 → 2024-07-01 (+3d) | 2024-07-03 → 2024-07-04 (+1d) |  |
| 12 | 整体设计执行 | 2024-07-04 → 2024-07-05 (+1d) | 2024-07-12 → 2024-07-15 (+3d) |  |
| 13 | **模块设计执行** | 2024-07-15 → 2024-07-16 (+1d) | 2024-07-26 → 2024-07-31 (+5d) | 10d → 12d |
| 14 | API产品设计 | 2024-07-15 → 2024-07-16 (+1d) | 2024-07-22 → 2024-07-23 (+1d) |  |
| 15 | 模型产品设计 | 2024-07-15 → 2024-07-16 (+1d) | 2024-07-26 → 2024-07-31 (+5d) | 10d → 12d |
| 16 | 数仓产品设计 | 2024-07-15 → 2024-07-16 (+1d) | 2024-07-22 → 2024-07-23 (+1d) |  |
| 17 | 平台产品设计 | 2024-07-15 → 2024-07-16 (+1d) | 2024-07-26 → 2024-07-29 (+3d) |  |
| 18 | 产品UI设计 | 2024-07-15 → 2024-07-16 (+1d) | 2024-07-22 → 2024-07-23 (+1d) |  |
| 19 | **技术设计** | 2024-07-29 → 2024-08-01 (+3d) | 2024-09-06 → 2024-09-11 (+5d) |  |
| 20 | 整体架构设计 | 2024-07-29 → 2024-08-01 (+3d) | 2024-08-09 → 2024-08-14 (+5d) |  |
| 21 | **模块技术设计** | 2024-08-12 → 2024-08-15 (+3d) | 2024-09-06 → 2024-09-11 (+5d) |  |
| 22 | API技术设计 | 2024-08-12 → 2024-08-15 (+3d) | 2024-08-28 → 2024-09-02 (+5d) |  |
| 23 | 识别模型技术设计 | 2024-08-12 → 2024-08-15 (+3d) | 2024-09-04 → 2024-09-09 (+5d) |  |
| 24 | 处置模型技术设计 | 2024-08-12 → 2024-08-15 (+3d) | 2024-09-06 → 2024-09-11 (+5d) |  |
| 25 | 数仓技术设计 | 2024-08-12 → 2024-08-15 (+3d) | 2024-08-19 → 2024-08-22 (+3d) |  |
| 26 | 平台技术设计 | 2024-08-12 → 2024-08-15 (+3d) | 2024-08-27 → 2024-08-30 (+3d) |  |
| 27 | **产品研发** | 2024-08-20 → 2024-08-23 (+3d) | 2024-11-11 → 2024-11-14 (+3d) |  |
| 28 | **模块研发** | 2024-08-20 → 2024-08-23 (+3d) | 2024-10-30 → 2024-11-04 (+5d) |  |
| 29 | **API模块研发** | 2024-08-29 → 2024-09-03 (+5d) | 2024-10-08 → 2024-10-11 (+3d) |  |
| 30 | 主接口研发 | 2024-08-29 → 2024-09-03 (+5d) | 2024-09-11 → 2024-09-16 (+5d) |  |
| 31 | PI层研发 | 2024-09-12 → 2024-09-17 (+5d) | 2024-09-23 → 2024-09-26 (+3d) |  |
| 32 | RE层研发 | 2024-09-12 → 2024-09-17 (+5d) | 2024-09-30 → 2024-10-03 (+3d) |  |
| 33 | BE层研发 | 2024-09-12 → 2024-09-17 (+5d) | 2024-10-03 → 2024-10-08 (+5d) |  |
| 34 | API集成 | 2024-10-04 → 2024-10-09 (+5d) | 2024-10-08 → 2024-10-11 (+3d) |  |
| 35 | **识别模型研发** | 2024-09-05 → 2024-09-10 (+5d) | 2024-10-16 → 2024-10-21 (+5d) |  |
| 36 | 分类模型研发 | 2024-09-05 → 2024-09-10 (+5d) | 2024-10-16 → 2024-10-21 (+5d) |  |
| 37 | 负向过滤模型研发 | 2024-09-05 → 2024-09-10 (+5d) | 2024-10-09 → 2024-10-14 (+5d) |  |
| 38 | **处置模型研发** | 2024-09-09 → 2024-09-12 (+3d) | 2024-10-14 → 2024-10-17 (+3d) |  |
| 39 | RAG知识库研发 | 2024-09-09 → 2024-09-12 (+3d) | 2024-10-09 → 2024-10-14 (+5d) |  |
| 40 | LLM研发 | 2024-09-09 → 2024-09-12 (+3d) | 2024-10-04 → 2024-10-09 (+5d) |  |
| 41 | 识别检索模型研发 | 2024-09-09 → 2024-09-12 (+3d) | 2024-09-27 → 2024-10-02 (+5d) |  |
| 42 | 模型集成 | 2024-10-10 → 2024-10-15 (+5d) | 2024-10-14 → 2024-10-17 (+3d) |  |
| 43 | **数仓研发** | 2024-08-20 → 2024-08-23 (+3d) | 2024-10-10 → 2024-10-15 (+5d) |  |
| 44 | 数据爬取 | 2024-08-20 → 2024-08-23 (+3d) | 2024-09-23 → 2024-09-26 (+3d) |  |
| 45 | 数据清洗 | 2024-08-20 → 2024-08-23 (+3d) | 2024-09-30 → 2024-10-03 (+3d) |  |
| 46 | 数据入库 | 2024-10-01 → 2024-10-04 (+3d) | 2024-10-10 → 2024-10-15 (+5d) |  |
| 47 | **平台研发** | 2024-10-09 → 2024-10-14 (+5d) | 2024-10-30 → 2024-11-04 (+5d) |  |
| 48 | CONSOLE平台研发 | 2024-10-15 → 2024-10-18 (+3d) | 2024-10-30 → 2024-11-04 (+5d) |  |
| 49 | ADMIN平台研发 | 2024-10-09 → 2024-10-14 (+5d) | 2024-10-24 → 2024-10-29 (+5d) |  |
| 50 | OP平台研发 | 2024-10-17 → 2024-10-22 (+5d) | 2024-10-25 → 2024-10-30 (+5d) |  |
| 51 | 集成研发 | 2024-10-31 → 2024-11-05 (+5d) | 2024-11-11 → 2024-11-14 (+3d) |  |
| 52 | **产品测试** | 2024-09-09 → 2024-09-12 (+3d) | 2024-11-28 → 2024-12-03 (+5d) |  |
| 53 | **测试设计** | 2024-09-09 → 2024-09-12 (+3d) | 2024-09-30 → 2024-10-03 (+3d) |  |
| 54 | 测试用例设计 | 2024-09-09 → 2024-09-12 (+3d) | 2024-09-20 → 2024-09-25 (+5d) |  |
| 55 | 测试方案设计 | 2024-09-23 → 2024-09-26 (+3d) | 2024-09-30 → 2024-10-03 (+3d) |  |
| 56 | **模块测试** | 2024-10-09 → 2024-10-14 (+5d) | 2024-11-12 → 2024-11-15 (+3d) |  |
| 57 | API模块测试 | 2024-10-09 → 2024-10-14 (+5d) | 2024-10-21 → 2024-10-24 (+3d) |  |
| 58 | 识别模型测试 | 2024-10-17 → 2024-10-22 (+5d) | 2024-11-01 → 2024-11-06 (+5d) |  |
| 59 | 处置模型测试 | 2024-10-15 → 2024-10-18 (+3d) | 2024-11-05 → 2024-11-08 (+3d) |  |
| 60 | 数仓测试 | 2024-10-11 → 2024-10-16 (+5d) | 2024-10-22 → 2024-10-25 (+3d) |  |
| 61 | 平台测试 | 2024-10-31 → 2024-11-05 (+5d) | 2024-11-12 → 2024-11-15 (+3d) |  |
| 62 | 集成测试 | 2024-11-13 → 2024-11-18 (+5d) | 2024-11-28 → 2024-12-03 (+5d) |  |
| 63 | **部署与验收** | 2024-11-12 → 2024-11-15 (+3d) | 2024-12-20 → 2024-12-25 (+5d) |  |
| 64 | 部署方案设计 | 2024-11-12 → 2024-11-15 (+3d) | 2024-11-18 → 2024-11-21 (+3d) |  |
| 65 | 部署实施 | 2024-11-29 → 2024-12-04 (+5d) | 2024-12-16 → 2024-12-19 (+3d) |  |
| 66 | 验收 | 2024-12-17 → 2024-12-20 (+3d) | 2024-12-20 → 2024-12-25 (+5d) |  |
